# 222

How a schedule from MS Project changed from version to version. A marks actual dates.

## Version 1 (saved 2019-10-17, file WBS nhom ERP.mpp)

Note of the change: Create WBS nhom ERP.mpp

| ID | WBS | Task | Duration | Start | Finish | Predecessors |
| --- | --- | --- | --- | --- | --- | --- |
| 1 | 1 | **1. Khởi tạo** | 10d | 2019-09-01 | 2019-09-12 |  |
| 2 |  | 1.1 Lựa chọn dự án (dự án Xây dựng hệ thống ERP phân hệ nhân sự cho khách sạn Trang Ngân ) | 2d | 2019-09-01 | 2019-09-02 |  |
| 3 |  | 1.2 Phê duyệt dự án | 2d | 2019-09-03 | 2019-09-04 | 2 |
| 4 |  | 1.3 Phát triển hiến chương dự án ( project charter ) | 2d | 2019-09-05 | 2019-09-06 | 3 |
| 5 |  | 1.4 Họp khởi công | 2d | 2019-09-09 | 2019-09-10 | 4 |
| 6 |  | 1.5 Chọn người quản lí dự án + tìm kiếm thành viên | 2d | 2019-09-11 | 2019-09-12 | 5 |
| 7 | 2 | **2. Lập kế hoạch** | 20d | 2019-09-13 | 2019-10-10 | 1 |
| 8 |  | 2.1 Bảng phân công công việc | 2d | 2019-09-13 | 2019-09-16 | 6 |
| 9 |  | 2.2 Lập kế hoạch dự án | 3d | 2019-09-17 | 2019-09-19 | 8 |
| 10 |  | 2.3 Tìm kiếm nguồn lực | 12d | 2019-09-20 | 2019-10-07 | 9 |
| 11 |  | 2.4 Xác định chi phí, rủi ro dự án | 3d | 2019-10-08 | 2019-10-10 | 10 |
| 12 | 3 | **3. Thực hiện** | 30d | 2019-10-11 | 2019-11-21 | 7 |
| 13 |  | 3.1 Khảo sát | 2d | 2019-10-11 | 2019-10-14 | 11 |
| 14 |  | 3.2 Phân tích hệ thống | 5d | 2019-10-15 | 2019-10-21 | 13 |
| 15 |  | 3.3 Triển khai Chức năng quản lý hồ sơ nhân viên | 20d | 2019-10-22 | 2019-11-18 | 14 |
| 16 |  | 3.4 Triển khai chức năng quản lý tiền lương | 20d | 2019-10-22 | 2019-11-18 | 14, 15SS |
| 17 |  | 3.5 Triển khai chức năng quản lý chấm công | 20d | 2019-10-22 | 2019-11-18 | 14, 15SS, 16SS |
| 18 |  | 3.6 Kiểm thử hệ thống | 3d | 2019-11-19 | 2019-11-21 | 17 |
| 19 | 4 | **4. Giám sát và kiểm soát** | 35d | 2019-10-11 | 2019-11-28 | 12SS |
| 20 |  | 4.1 Giám sát tiến độ | 30d | 2019-10-11 | 2019-11-21 | 13SS |
| 21 |  | 4.2 Kiểm soát thay đổi của hệ thống | 2d | 2019-11-22 | 2019-11-25 | 20, 18 |
| 22 |  | 4.3 Kiểm tra chất lượng hệ thống | 3d | 2019-11-26 | 2019-11-28 | 21 |
| 23 | 5 | **5. Đóng dự án** | 5d | 2019-11-29 | 2019-12-05 | 19 |
| 24 |  | 5.1 Báo cáo kết quả | 1d | 2019-11-29 | 2019-11-29 | 22 |
| 25 |  | 5.2 Bài học kinh nghiệm | 1d | 2019-12-02 | 2019-12-02 | 24 |
| 26 |  | 5.3 Lưu tài liệu dự án | 1d | 2019-12-03 | 2019-12-03 | 25 |
| 27 |  | 5.4 Thanh toán mọi chi phí tồn | 2d | 2019-12-04 | 2019-12-05 | 26 |

## Version 2 (saved 2019-10-22, file WBS nhom ERP1.mpp)

Note of the change: Cập nhật WBS

Last finish 2019-12-05 → 2019-12-06 (+1d).

Changed:

| ID | Task | Start | Finish | Duration | Total float | Predecessors | Other |
| --- | --- | --- | --- | --- | --- | --- | --- |
| 1 | **1. Khởi tạo** | 2019-09-01 → 2019-09-02 (+1d) |  | 10d → 18h |  |  | constraint none → start no earlier than 2019-09-02 |
| 2 | 1.1 Lựa chọn dự án (dự án Xây dựng hệ thống ERP phân hệ nhân sự cho khách sạn Trang Ngân ) | 2019-09-01 → 2019-09-02 (+1d) | 2019-09-02 → 2019-09-03 (+1d) | 2d → 4h |  |  | constraint none → start no earlier than 2019-09-02; resources Ngô Hữu Hải → Trần Đình Hà |
| 3 | 1.2 Phê duyệt dự án | 2019-09-03 → 2019-09-04 (+1d) | 2019-09-04 → 2019-09-05 (+1d) | 2d → 4h |  |  | constraint none → start no earlier than 2019-09-04; resources Nguyễn Nhật Trí → Ngô Hữu Hải |
| 4 | 1.3 Phát triển hiến chương dự án ( project charter ) | 2019-09-05 → 2019-09-06 (+1d) | 2019-09-06 → 2019-09-09 (+3d) | 2d → 4h |  |  | constraint none → start no earlier than 2019-09-06; resources Nguyễn Thành Kiêm → Ngô Hữu Hải |
| 5 | 1.4 Họp khởi công | 2019-09-09 → 2019-09-10 (+1d) |  | 2d → 2h |  |  | constraint none → start no earlier than 2019-09-10; resources Trần Đình Hà → Ngô Hữu Hải; Nguyễn Nhật Trí; Nguyễn Thành Kiêm; Trần Đình Hà; Trần Thị Phương Dung |
| 6 | 1.5 Chọn người quản lí dự án + tìm kiếm thành viên |  |  | 2d → 4h |  |  | constraint none → start no earlier than 2019-09-11 |
| 7 | **2. Lập kế hoạch** |  | 2019-10-10 → 2019-10-09 (-1d) | 20d → 38h |  |  | constraint none → start no earlier than 2019-09-13 |
| 8 | 2.1 Bảng phân công công việc |  |  | 2d → 4h |  |  | constraint none → start no earlier than 2019-09-13; resources Trần Đình Hà → Ngô Hữu Hải |
| 9 | 2.2 Lập kế hoạch dự án |  | 2019-09-19 → 2019-09-23 (+4d) | 3d → 10h | none → 0d |  | constraint none → start no earlier than 2019-09-17; resources Nguyễn Thành Kiêm; Trần Đình Hà → Nguyễn Nhật Trí |
| 10 | 2.3 Tìm kiếm nguồn lực | 2019-09-20 → 2019-09-24 (+4d) | 2019-10-07 → 2019-10-08 (+1d) | 12d → 22h | none → 0d |  | constraint none → start no earlier than 2019-09-23; resources Ngô Hữu Hải; Trần Thị Phương Dung; Trần Đình Hà → Trần Thị Phương Dung |
| 11 | 2.4 Xác định chi phí, rủi ro dự án | 2019-10-08 → 2019-10-09 (+1d) | 2019-10-10 → 2019-10-09 (-1d) | 3d → 2h | none → 0d |  | constraint none → start no earlier than 2019-10-08; resources Nguyễn Nhật Trí; Nguyễn Thành Kiêm → Ngô Hữu Hải |
| 12 | **3. Thực hiện** | 2019-10-11 → 2019-10-10 (-1d) | 2019-11-21 → 2019-11-22 (+1d) | 30d → 64h |  |  | constraint none → start no earlier than 2019-10-10 |
| 13 | 3.1 Khảo sát | 2019-10-11 → 2019-10-10 (-1d) | 2019-10-14 → 2019-10-15 (+1d) | 2d → 8h |  |  | constraint none → finish no earlier than 2019-10-15; resources Nguyễn Nhật Trí → Ngô Hữu Hải |
| 14 | 3.2 Phân tích hệ thống | 2019-10-15 → 2019-10-16 (+1d) | 2019-10-21 → 2019-10-22 (+1d) | 5d → 10h |  |  | constraint none → start no earlier than 2019-10-16; resources Nguyễn Thành Kiêm → Trần Thị Phương Dung |
| 15 | 3.3 Triển khai Chức năng quản lý hồ sơ nhân viên | 2019-10-22 → 2019-10-23 (+1d) | 2019-11-18 → 2019-11-19 (+1d) | 20d → 40h |  |  | constraint none → start no earlier than 2019-10-23; resources Trần Đình Hà → Nguyễn Thành Kiêm |
| 16 | 3.4 Triển khai chức năng quản lý chấm công | 2019-10-22 → 2019-10-23 (+1d) | 2019-11-18 → 2019-11-05 (-13d) | 20d → 20h |  |  | was named 3.4 Triển khai chức năng quản lý tiền lương; constraint none → start no earlier than 2019-10-23; resources Trần Thị Phương Dung; Nguyễn Nhật Trí → Nguyễn Nhật Trí |
| 17 | 3.5 Triển khai chức năng quản lý tiền lương | 2019-10-22 → 2019-11-06 (+15d) | 2019-11-18 → 2019-11-19 (+1d) | 20d → 20h |  | 14, 15SS, 16SS → 16 | was named 3.5 Triển khai chức năng quản lý chấm công; constraint none → start no earlier than 2019-11-06; resources Nguyễn Thành Kiêm → Ngô Hữu Hải |
| 18 | 3.6 Kiểm thử hệ thống | 2019-11-19 → 2019-11-20 (+1d) | 2019-11-21 → 2019-11-22 (+1d) | 3d → 6h |  |  | constraint none → start no earlier than 2019-11-20; resources Trần Thị Phương Dung → Nguyễn Nhật Trí |
| 19 | **4. Giám sát và kiểm soát** | 2019-10-11 → 2019-10-10 (-1d) | 2019-11-28 → 2019-11-29 (+1d) | 35d → 74h |  |  | constraint none → start no earlier than 2019-10-10 |
| 20 | 4.1 Giám sát tiến độ | 2019-10-11 → 2019-10-10 (-1d) | 2019-11-21 → 2019-11-22 (+1d) | 30d → 64h |  |  | constraint none → start no earlier than 2019-10-10; resources Ngô Hữu Hải → Trần Đình Hà |
| 21 | 4.2 Kiểm soát thay đổi của hệ thống | 2019-11-22 → 2019-11-25 (+3d) | 2019-11-25 → 2019-11-26 (+1d) | 2d → 4h |  |  | constraint none → start no earlier than 2019-11-25; resources Ngô Hữu Hải → Trần Thị Phương Dung |
| 22 | 4.3 Kiểm tra chất lượng hệ thống | 2019-11-26 → 2019-11-27 (+1d) | 2019-11-28 → 2019-11-29 (+1d) | 3d → 6h |  |  | constraint none → start no earlier than 2019-11-27; resources Trần Đình Hà → Trần Thị Phương Dung |
| 23 | **5. Đóng dự án** | 2019-11-29 → 2019-12-02 (+3d) | 2019-12-05 → 2019-12-06 (+1d) | 5d → 10h |  |  | constraint none → start no earlier than 2019-12-02 |
| 24 | 5.1 Báo cáo kết quả | 2019-11-29 → 2019-12-02 (+3d) | 2019-11-29 → 2019-12-02 (+3d) | 1d → 2h |  |  | constraint none → start no earlier than 2019-12-02; resources Nguyễn Nhật Trí; Nguyễn Thành Kiêm → Ngô Hữu Hải |
| 25 | 5.2 Bài học kinh nghiệm | 2019-12-02 → 2019-12-03 (+1d) | 2019-12-02 → 2019-12-04 (+2d) | 1d → 4h |  |  | constraint none → start no earlier than 2019-12-03; resources Ngô Hữu Hải; Trần Đình Hà; Trần Thị Phương Dung → Nguyễn Thành Kiêm |
| 26 | 5.3 Lưu tài liệu dự án | 2019-12-03 → 2019-12-05 (+2d) | 2019-12-03 → 2019-12-05 (+2d) | 1d → 2h |  |  | constraint none → start no earlier than 2019-12-04; resources Ngô Hữu Hải; Nguyễn Nhật Trí → Nguyễn Nhật Trí |
| 27 | 5.4 Thanh toán mọi chi phí tồn | 2019-12-04 → 2019-12-06 (+2d) | 2019-12-05 → 2019-12-06 (+1d) | 2d → 2h |  |  | constraint none → start no earlier than 2019-12-05; resources Nguyễn Thành Kiêm; Trần Đình Hà → Nguyễn Nhật Trí |

## Version 3 (saved 2019-10-23, file WBS nhom ERP1.mpp)

Note of the change: Update WBS nhom ERP1.mpp

Last finish stays 2019-12-06.

Changed:

| ID | Task | Other |
| --- | --- | --- |
| 1 | **1. Khởi tạo** | baseline start none → 2019-09-02; baseline finish none → 2019-09-12 |
| 2 | 1.1 Lựa chọn dự án (dự án Xây dựng hệ thống ERP phân hệ nhân sự cho khách sạn Trang Ngân ) | baseline start none → 2019-09-02; baseline finish none → 2019-09-03 |
| 3 | 1.2 Phê duyệt dự án | baseline start none → 2019-10-04; baseline finish none → 2019-10-05 |
| 4 | 1.3 Phát triển hiến chương dự án ( project charter ) | baseline start none → 2019-09-06; baseline finish none → 2019-09-09 |
| 5 | 1.4 Họp khởi công | baseline start none → 2019-09-10; baseline finish none → 2019-09-10 |
| 6 | 1.5 Chọn người quản lí dự án + tìm kiếm thành viên | baseline start none → 2019-09-11; baseline finish none → 2019-09-12 |
| 7 | **2. Lập kế hoạch** | baseline start none → 2019-09-13; baseline finish none → 2019-10-09 |
| 8 | 2.1 Bảng phân công công việc | baseline start none → 2019-09-13; baseline finish none → 2019-09-16 |
| 9 | 2.2 Lập kế hoạch dự án | baseline start none → 2019-09-17; baseline finish none → 2019-09-23 |
| 10 | 2.3 Tìm kiếm nguồn lực | baseline start none → 2019-09-24; baseline finish none → 2019-10-09 |
| 11 | 2.4 Xác định chi phí, rủi ro dự án | baseline start none → 2019-10-09; baseline finish none → 2019-10-09 |
| 12 | **3. Thực hiện** | baseline start none → 2019-10-10 |
| 13 | 3.1 Khảo sát | baseline start none → 2019-10-10; baseline finish none → 2019-10-15 |
| 14 | 3.2 Phân tích hệ thống | baseline start none → 2019-10-16; baseline finish none → 2019-10-22 |
| 15 | 3.3 Triển khai Chức năng quản lý hồ sơ nhân viên | baseline start none → 2019-10-23 |
| 16 | 3.4 Triển khai chức năng quản lý chấm công | baseline start none → 2019-10-23 |

## Version 4 (saved 2019-11-17, file WBS nhom ERP1.mpp)

Note of the change: Merge 4c3450f01a47596f5130ce1b52ce1e041455ef8e into f65e6a178e72268850b0eebfba2bdeabdc46dd37

Last finish stays 2019-12-06. Complete tasks 0 → 13.

Changed:

| ID | Task | Start | Finish | Duration | Complete | Total float | Other |
| --- | --- | --- | --- | --- | --- | --- | --- |
| 1 | **1. Khởi tạo** | 2019-09-02 A | 2019-09-12 A |  | 0% → 100% |  |  |
| 2 | 1.1 Lựa chọn dự án (dự án Xây dựng hệ thống ERP phân hệ nhân sự cho khách sạn Trang Ngân ) | 2019-09-02 A | 2019-09-03 A |  | 0% → 100% |  |  |
| 3 | 1.2 Phê duyệt dự án | 2019-09-04 A | 2019-09-05 A |  | 0% → 100% |  |  |
| 4 | 1.3 Phát triển hiến chương dự án ( project charter ) | 2019-09-06 A | 2019-09-09 A |  | 0% → 100% |  |  |
| 5 | 1.4 Họp khởi công | 2019-09-10 A | 2019-09-10 A |  | 0% → 100% |  |  |
| 6 | 1.5 Chọn người quản lí dự án + tìm kiếm thành viên | 2019-09-11 A | 2019-09-12 A |  | 0% → 100% |  |  |
| 7 | **2. Lập kế hoạch** | 2019-09-13 A | 2019-10-09 A |  | 0% → 100% |  |  |
| 8 | 2.1 Bảng phân công công việc | 2019-09-13 A | 2019-09-16 A |  | 0% → 100% |  |  |
| 9 | 2.2 Lập kế hoạch dự án | 2019-09-17 A | 2019-09-23 A |  | 0% → 100% | 0d → none |  |
| 10 | 2.3 Tìm kiếm nguồn lực | 2019-09-24 A | 2019-10-08 A |  | 0% → 100% | 0d → none |  |
| 11 | 2.4 Xác định chi phí, rủi ro dự án | 2019-10-09 A | 2019-10-09 A |  | 0% → 100% | 0d → none |  |
| 12 | **3. Thực hiện** | 2019-10-10 A |  |  | 0% → 96% |  | baseline finish none → 2019-11-17 |
| 13 | 3.1 Khảo sát | 2019-10-10 A | 2019-10-15 A | 8h → 8h? | 0% → 100% |  |  |
| 14 | 3.2 Phân tích hệ thống | 2019-10-16 A | 2019-10-22 → 2019-10-23 A (+1d) | 10h → 12h | 0% → 100% |  | baseline finish 2019-10-22 → 2019-10-23 |
| 15 | 3.3 Triển khai Chức năng quản lý hồ sơ nhân viên | 2019-10-23 A |  |  | 0% → 94% |  | baseline start 2019-10-23 → 2019-10-24; baseline finish none → 2019-11-17 |
| 16 | 3.4 Triển khai chức năng quản lý chấm công | 2019-10-23 A | 2019-11-05 A |  | 0% → 100% |  | baseline start 2019-10-23 → 2019-11-24; baseline finish none → 2019-11-05 |
| 17 | 3.5 Triển khai chức năng quản lý tiền lương | 2019-11-06 A |  |  | 0% → 89% |  | baseline start none → 2019-11-06; baseline finish none → 2019-11-14 |
| 18 | 3.6 Kiểm thử hệ thống | 2019-11-20 A | 2019-11-22 A |  | 0% → 100% |  | baseline start none → 2019-11-15; baseline finish none → 2019-11-19 |
| 19 | **4. Giám sát và kiểm soát** | 2019-10-10 A |  |  | 0% → 83% |  | baseline start none → 2019-10-10 |
| 20 | 4.1 Giám sát tiến độ | 2019-10-10 A |  |  | 0% → 96% |  | baseline start none → 2019-10-10; baseline finish none → 2019-11-19 |
